# REDISEÑO 3.0

Schedule from MS Project, 2013-06-21 to 2013-08-28, status date 2013-06-22, costs in Bs. F., A marks actual dates.

## Calendars

- Estándar: Mon-Fri 09:00-13:00, 15:00-19:00; Sat-Sun off. Exceptions (off unless hours are given): 2013-06-24, 2013-07-05, 2013-07-24.

## Resources

| Resource | Rate |
| --- | --- |
| Líder de proyecto | 10 |
| Recurso BBOS | 5 |
| Recurso iOS | 5 |
| Recurso Android | 5 |
| Recurso WAP | 5 |
| Integración | 5 |
| Cliente |  |
| Calidad | 8 |
| Diseño | 8 |
| Recurso Web | 5 |
| Arquitectura | 8 |
| Banesco |  |
| Recurso Windows Phone |  |
| Recurso CMS |  |

## Schedule

| ID | WBS | Task | Duration | Start | Finish | Predecessors | Baseline start | Baseline finish | Baseline duration | Total slack | Free slack | Resources | Work | Cost | Baseline cost |
| --- | --- | --- | --- | --- | --- | --- | --- | --- | --- | --- | --- | --- | --- | --- | --- |
| 1 | 1 | **Fase 1 - Pruebas Rediseño BanescoMóvil** | 33.15d? | 2013-06-21 09:00 | 2013-08-12 10:10 |  | 2013-01-07 11:00 | 2013-01-10 10:00 | 2.88d | -32.15d | 0d |  | 730h | 4,413.5 | 230 |
| 2 | 1.1 | **Construcción** | 26d? | 2013-06-21 09:00 | 2013-07-31 19:00 |  |  |  |  | -31.44d | 0d |  | 442h | 2,210 |  |
| 3 | 1.1.1 | **Blackberry** | 3.75d | 2013-06-21 09:00 | 2013-06-27 17:00 |  |  |  |  | -31.44d | 0d |  | 30h | 150 |  |
| 4 | 1.1.1.1 | Archivo de configuración | 3d? | 2013-06-21 09:00 | 2013-06-26 19:00 |  |  |  |  | -31.44d | 0d | Recurso BBOS | 24h | 120 |  |
| 5 | 1.1.1.2 | Incorporar concepto a la transferencia | 0.75d? | 2013-06-27 09:00 | 2013-06-27 17:00 | 4 |  |  |  | -31.44d | 0d | Recurso BBOS | 6h | 30 |  |
| 6 | 1.1.2 | **Android** | 12.75d | 2013-06-21 09:00 | 2013-07-11 17:00 |  |  |  |  | -18.69d | 0d |  | 102h | 510 |  |
| 7 | 1.1.2.1 | **Smartphone** | 6.75d | 2013-06-21 09:00 | 2013-07-02 17:00 |  |  |  |  | -18.69d | 0d |  | 54h | 270 |  |
| 8 | 1.1.2.1.1 | Ajustes de usabilidad | 3d? | 2013-06-21 09:00 | 2013-06-26 19:00 |  |  |  |  | -18.69d | 0d | Recurso Android | 24h | 120 |  |
| 9 | 1.1.2.1.2 | Archivo de configuración | 3d? | 2013-06-27 09:00 | 2013-07-01 19:00 | 8 |  |  |  | -18.69d | 0d | Recurso Android | 24h | 120 |  |
| 10 | 1.1.2.1.3 | Incorporar concepto a la transferencia | 0.75d? | 2013-07-02 09:00 | 2013-07-02 17:00 | 9 |  |  |  | -18.69d | 0d | Recurso Android | 6h | 30 |  |
| 11 | 1.1.2.2 | **Tablet** | 6d | 2013-07-02 17:00 | 2013-07-11 17:00 |  |  |  |  | -17.06d | 0d |  | 48h | 240 |  |
| 12 | 1.1.2.2.1 | Ajustes de usabilidad | 3d? | 2013-07-02 17:00 | 2013-07-08 17:00 | 10 |  |  |  | -17.06d | 0d | Recurso Android | 24h | 120 |  |
| 13 | 1.1.2.2.2 | Archivo de configuración | 3d? | 2013-07-08 17:00 | 2013-07-11 17:00 | 12 |  |  |  | -17.06d | 0d | Recurso Android | 24h | 120 |  |
| 14 | 1.1.3 | **IOS** | 12.75d | 2013-06-21 09:00 | 2013-07-11 17:00 |  |  |  |  | -25.81d | 0d |  | 102h | 510 |  |
| 15 | 1.1.3.1 | **iPhone** | 6.75d | 2013-06-21 09:00 | 2013-07-02 17:00 |  |  |  |  | -25.81d | 0d |  | 54h | 270 |  |
| 16 | 1.1.3.1.1 | Ajustes de usabilidad | 3d? | 2013-06-21 09:00 | 2013-06-26 19:00 |  |  |  |  | -25.81d | 0d | Recurso iOS | 24h | 120 |  |
| 17 | 1.1.3.1.2 | Archivo de configuración | 3d? | 2013-06-27 09:00 | 2013-07-01 19:00 | 16 |  |  |  | -25.81d | 0d | Recurso iOS | 24h | 120 |  |
| 18 | 1.1.3.1.3 | Incorporar concepto a la transferencia | 0.75d? | 2013-07-02 09:00 | 2013-07-02 17:00 | 17 |  |  |  | -25.81d | 0d | Recurso iOS | 6h | 30 |  |
| 19 | 1.1.3.2 | **iPad** | 6d | 2013-07-02 17:00 | 2013-07-11 17:00 |  |  |  |  | -16.65d | 0d |  | 48h | 240 |  |
| 20 | 1.1.3.2.1 | Ajustes de usabilidad | 3d? | 2013-07-02 17:00 | 2013-07-08 17:00 | 18 |  |  |  | -16.65d | 0d | Recurso iOS | 24h | 120 |  |
| 21 | 1.1.3.2.2 | Archivo de configuración | 3d? | 2013-07-08 17:00 | 2013-07-11 17:00 | 20 |  |  |  | -16.65d | 0d | Recurso iOS | 24h | 120 |  |
| 22 | 1.1.4 | **CMS** | 26d | 2013-06-21 09:00 | 2013-07-31 19:00 |  |  |  |  | -25d | 0d |  | 208h | 1,040 |  |
| 23 | 1.1.4.1 | **Concepto de transferencia** | 26d | 2013-06-21 09:00 | 2013-07-31 19:00 |  |  |  |  | -25d | 0d |  | 208h | 1,040 |  |
| 24 | 1.1.4.1.1 | Aplicación Web Móvil | 6d? | 2013-06-21 09:00 | 2013-07-01 19:00 |  |  |  |  | -25d | 0d | Integración | 48h | 240 |  |
| 25 | 1.1.4.1.2 | Servicios para la aplicación | 6d? | 2013-07-02 09:00 | 2013-07-10 19:00 | 24 |  |  |  | -25d | 0d | Integración | 48h | 240 |  |
| 26 | 1.1.4.1.3 | Asset | 4d? | 2013-07-11 09:00 | 2013-07-16 19:00 | 25 |  |  |  | -25d | 0d | Integración | 32h | 160 |  |
| 27 | 1.1.4.1.4 | Pruebas unitarias | 7d? | 2013-07-17 09:00 | 2013-07-26 19:00 | 26 |  |  |  | -25d | 0d | Integración | 56h | 280 |  |
| 28 | 1.1.4.1.5 | Documentación | 2d? | 2013-07-29 09:00 | 2013-07-30 19:00 | 27 |  |  |  | -25d | 0d | Integración | 16h | 80 |  |
| 29 | 1.1.4.1.6 | Pase a producción | 1d? | 2013-07-31 09:00 | 2013-07-31 19:00 | 28 |  |  |  | -25d | 0d | Integración | 8h | 40 |  |

| ID | WBS | Task | Duration | Start | Finish | Predecessors | Baseline start | Baseline finish | Baseline duration | Total slack | Free slack | Resources | Work | Cost | Baseline cost |
| --- | --- | --- | --- | --- | --- | --- | --- | --- | --- | --- | --- | --- | --- | --- | --- |
| 30 | 1.2 | **Transición** | 33.15d? | 2013-06-21 09:00 | 2013-08-12 10:10 |  |  |  |  | -32.15d | 0d |  | 288h | 2,203.5 |  |
| 31 | 1.2.1 | **Pruebas Integrales** | 33.15d? | 2013-06-21 09:00 | 2013-08-12 10:10 |  | 2013-03-05 11:00 | 2013-04-05 12:40 | 21.21d? | -32.15d | 0d |  | 288h | 2,203.5 | 1,572 |
| 32 | 1.2.1.1 | **Blackberry** | 8.5d | 2013-06-27 17:00 | 2013-07-11 11:00 | 3 | 2013-03-05 11:00 | 2013-03-13 13:00 | 6.25d? | -31.44d | 0d |  | 78h | 594 | 440 |
| 33 | 1.2.1.1.1 | Ejecución de Pruebas Funcionales (Primer Ciclo) | 3.12d? | 2013-06-27 17:00 | 2013-07-02 18:00 |  | 2013-03-05 11:00 | 2013-03-07 17:00 | 2.5d? | -31.44d | 0d | Calidad | 25h | 200 | 160 |
| 34 | 1.2.1.1.2 | Reporte y corrección de incidencias (Primer Ciclo) | 0.62d? | 2013-07-02 18:00 | 2013-07-03 13:00 | 33 | 2013-03-07 17:00 | 2013-03-08 11:00 | 0.5d? | -31.44d | 0d | Calidad; Recurso BBOS | 10h | 65 | 52 |
| 35 | 1.2.1.1.3 | Ejecución de Pruebas Funcionales (Segundo Ciclo) | 3.12d? | 2013-07-03 15:00 | 2013-07-09 16:00 | 34 | 2013-03-08 11:00 | 2013-03-12 11:00 | 2d? | -31.44d | 0d | Calidad | 25h | 200 | 128 |
| 36 | 1.2.1.1.4 | Reporte y corrección de incidencias (Segundo Ciclo) | 0.62d? | 2013-07-09 16:00 | 2013-07-10 11:00 | 35 | 2013-03-12 11:00 | 2013-03-12 17:00 | 0.5d? | -31.44d | 0d | Calidad; Recurso BBOS | 10h | 65 | 52 |
| 37 | 1.2.1.1.5 | Revisión final | 1d? | 2013-07-10 11:00 | 2013-07-11 11:00 | 36 | 2013-03-12 17:00 | 2013-03-13 13:00 | 0.75d? | -31.44d | 0d | Calidad | 8h | 64 | 48 |
| 38 | 1.2.1.2 | Certificación de la solución | 1h | 2013-07-11 11:00 | 2013-07-11 12:00 | 37 | 2013-03-13 15:00 | 2013-03-13 16:00 | 1h | -31.44d | 0d | Calidad; Líder de proyecto | 2h | 18 | 18 |
| 39 | 1.2.1.3 | **iPhone** | 7d | 2013-07-11 12:00 | 2013-07-22 12:00 | 15 | 2013-03-13 16:00 | 2013-03-20 10:00 | 4.5d? | -31.44d | 0d |  | 66h | 498 | 328 |
| 40 | 1.2.1.3.1 | Ejecución de Pruebas Funcionales (Primer Ciclo) | 2.5d? | 2013-07-11 12:00 | 2013-07-15 18:00 | 38 | 2013-03-13 16:00 | 2013-03-15 16:00 | 2d? | -31.44d | 0d | Calidad | 20h | 160 | 128 |
| 41 | 1.2.1.3.2 | Reporte y corrección de incidencias (Primer Ciclo) | 0.62d? | 2013-07-15 18:00 | 2013-07-16 13:00 | 40 | 2013-03-15 16:00 | 2013-03-18 10:00 | 0.5d? | -31.44d | 0d | Calidad; Recurso iOS | 10h | 65 | 52 |
| 42 | 1.2.1.3.3 | Ejecución de Pruebas Funcionales (Segundo Ciclo) | 2.5d? | 2013-07-16 15:00 | 2013-07-18 19:00 | 41 | 2013-03-18 10:00 | 2013-03-19 10:00 | 1d? | -31.44d | 0d | Calidad | 20h | 160 | 64 |
| 43 | 1.2.1.3.4 | Reporte y corrección de incidencias (Segundo Ciclo) | 0.62d? | 2013-07-19 09:00 | 2013-07-19 16:00 | 42 | 2013-03-19 10:00 | 2013-03-19 16:00 | 0.5d? | -31.44d | 0d | Calidad; Recurso iOS | 10h | 65 | 52 |
| 44 | 1.2.1.3.5 | Revisión final | 0.75d? | 2013-07-19 16:00 | 2013-07-22 12:00 | 43 | 2013-03-19 16:00 | 2013-03-20 10:00 | 0.5d? | -31.44d | 0d | Calidad | 6h | 48 | 32 |
| 45 | 1.2.1.4 | Certificación de la solución | 1h | 2013-07-22 12:00 | 2013-07-22 13:00 | 44 | 2013-03-20 10:00 | 2013-03-20 11:00 | 1h | -31.44d | 0d | Calidad; Líder de proyecto | 2h | 18 | 18 |
| 46 | 1.2.1.5 | **iPad** | 5.02d | 2013-08-05 10:00 | 2013-08-12 10:10 | 19 | 2013-03-13 16:00 | 2013-03-20 10:00 | 4.5d? | -32.15d | 0d |  | 29h | 217 | 328 |
| 47 | 1.2.1.5.1 | Ejecución de Pruebas Funcionales (Primer Ciclo) | 1d? | 2013-08-05 10:00 | 2013-08-06 10:00 |  | 2013-03-13 16:00 | 2013-03-15 16:00 | 2d? | -32.02d | 0d | Calidad | 8h | 64 | 128 |
| 48 | 1.2.1.5.2 | Reporte y corrección de incidencias (Primer Ciclo) | 0.62d? | 2013-08-06 10:00 | 2013-08-06 17:00 | 47 | 2013-03-15 16:00 | 2013-03-18 10:00 | 0.5d? | -32.02d | 0d | Calidad; Recurso iOS | 5h | 32.5 | 52 |
| 49 | 1.2.1.5.3 | Ejecución de Pruebas Funcionales (Segundo Ciclo) | 0.88d? | 2013-08-07 16:00 | 2013-08-08 13:00 | 48 | 2013-03-18 10:00 | 2013-03-19 10:00 | 1d? | -32.02d | 0d | Calidad | 7h | 56 | 64 |
| 50 | 1.2.1.5.4 | Reporte y corrección de incidencias (Segundo Ciclo) | 0.52d? | 2013-08-08 15:00 | 2013-08-09 09:10 | 49 | 2013-03-19 10:00 | 2013-03-19 16:00 | 0.5d? | -32.02d | 0d | Calidad; Recurso iOS | 5h | 32.5 | 52 |
| 51 | 1.2.1.5.5 | Revisión final | 0.5d? | 2013-08-09 16:10 | 2013-08-12 10:10 | 50 | 2013-03-19 16:00 | 2013-03-20 10:00 | 0.5d? | -32.15d | 0d | Calidad | 4h | 32 | 32 |
| 52 | 1.2.1.6 | Certificación de la solución | 1h | 2013-06-21 09:00 | 2013-06-21 10:00 |  | 2013-03-26 17:00 | 2013-03-26 18:00 | 1h | 0.88d |  | Calidad; Líder de proyecto | 2h | 18 | 18 |
| 53 | 1.2.1.7 | **Android** | 7.5d | 2013-07-22 15:00 | 2013-08-01 19:00 | 7 | 2013-03-20 11:00 | 2013-03-26 17:00 | 4.5d? | -31.44d | 0d |  | 70h | 530 | 328 |
| 54 | 1.2.1.7.1 | Ejecución de Pruebas Funcionales (Primer Ciclo) | 2.62d? | 2013-07-22 15:00 | 2013-07-26 10:00 | 45 | 2013-03-20 11:00 | 2013-03-22 11:00 | 2d? | -31.44d | 0d | Calidad | 21h | 168 | 128 |
| 55 | 1.2.1.7.2 | Reporte y corrección de incidencias (Primer Ciclo) | 0.62d? | 2013-07-26 10:00 | 2013-07-26 17:00 | 54 | 2013-03-22 11:00 | 2013-03-22 17:00 | 0.5d? | -31.44d | 0d | Calidad; Recurso Android | 10h | 65 | 52 |
| 56 | 1.2.1.7.3 | Ejecución de Pruebas Funcionales (Segundo Ciclo) | 2.62d? | 2013-07-26 17:00 | 2013-07-31 12:00 | 55 | 2013-03-22 17:00 | 2013-03-25 17:00 | 1d? | -31.44d | 0d | Calidad | 21h | 168 | 64 |
| 57 | 1.2.1.7.4 | Reporte y corrección de incidencias (Segundo Ciclo) | 0.62d? | 2013-07-31 12:00 | 2013-07-31 19:00 | 56 | 2013-03-25 17:00 | 2013-03-26 11:00 | 0.5d? | -31.44d | 0d | Calidad; Recurso Android | 10h | 65 | 52 |
| 58 | 1.2.1.7.5 | Revisión final | 1d? | 2013-08-01 09:00 | 2013-08-01 19:00 | 57 | 2013-03-26 11:00 | 2013-03-26 17:00 | 0.5d? | -31.44d | 0d | Calidad | 8h | 64 | 32 |
| 59 | 1.2.1.8 | Certificación de la solución | 1h | 2013-08-02 09:00 | 2013-08-02 10:00 | 58 | 2013-03-26 17:00 | 2013-03-26 18:00 | 1h | -31.44d | 0d | Calidad; Líder de proyecto | 2h | 18 | 18 |

| ID | WBS | Task | Type | Duration | Start | Finish | Predecessors | Complete | Remaining | Baseline start | Baseline finish | Baseline duration | Total slack | Free slack | Constraint | Resources | Work | Cost | Baseline cost |
| --- | --- | --- | --- | --- | --- | --- | --- | --- | --- | --- | --- | --- | --- | --- | --- | --- | --- | --- | --- |
| 60 | 1.2.1.9 | **Android Tablet** |  | 5.4d | 2013-08-02 10:00 | 2013-08-09 15:10 | 11 |  |  | 2013-03-26 18:00 | 2013-04-05 11:40 | 5.46d? | -31.65d | 0d |  |  | 29h | 214.5 | 324 |
| 61 | 1.2.1.9.1 | Ejecución de Pruebas Funcionales (Primer Ciclo) |  | 1d? | 2013-08-02 10:00 | 2013-08-05 10:00 | 59 |  |  | 2013-03-26 18:00 | 2013-04-01 18:00 | 2d? | -31.44d | 0d |  | Calidad | 8h | 64 | 128 |
| 62 | 1.2.1.9.2 | Reporte y corrección de incidencias (Primer Ciclo) |  | 0.62d? | 2013-08-05 10:00 | 2013-08-06 12:30 | 61 |  |  | 2013-04-01 18:00 | 2013-04-03 13:00 | 1d? | -31.44d | 0d |  | Recurso Android [50%]; Recurso iOS [50%]; Calidad | 5h | 32.5 | 52 |
| 63 | 1.2.1.9.3 | Ejecución de Pruebas Funcionales (Segundo Ciclo) |  | 0.88d? | 2013-08-06 17:00 | 2013-08-07 16:00 | 62 |  |  | 2013-04-03 15:00 | 2013-04-04 13:00 | 1d? | -31.71d | 0d |  | Calidad | 7h | 56 | 64 |
| 64 | 1.2.1.9.4 | Reporte y corrección de incidencias (Segundo Ciclo) |  | 0.42d? | 2013-08-07 16:00 | 2013-08-08 16:40 | 63 |  |  | 2013-04-04 15:00 | 2013-04-04 17:40 | 0.33d? | -31.71d | 0d |  | Recurso Android; Recurso iOS; Calidad | 5h | 30 | 48 |
| 65 | 1.2.1.9.5 | Revisión final |  | 0.5d? | 2013-08-09 09:10 | 2013-08-09 15:10 | 64 |  |  | 2013-04-04 17:40 | 2013-04-05 11:40 | 0.5d? | -31.65d | 0d |  | Calidad | 4h | 32 | 32 |
| 66 | 1.2.1.10 | Certificación de la solución |  | 1h | 2013-08-09 15:10 | 2013-08-09 16:10 | 65 |  |  | 2013-04-05 11:40 | 2013-04-05 12:40 | 1h | -31.65d | 0d |  | Calidad; Líder de proyecto | 2h | 18 | 18 |
| 67 | 1.2.1.11 | Actualización del manual de usuario |  | 0.75d? | 2013-07-11 12:00 | 2013-07-12 10:00 | 38 |  |  | 2013-03-13 16:00 | 2013-03-14 12:00 | 0.75d? | -12.12d | 0d |  | Líder de proyecto | 6h | 60 | 60 |
| 68 | 1.2.1.12 | Entregable 18: Manual de Usuario Final | milestone | 0d | 2013-07-12 10:00 | 2013-07-12 10:00 | 67 |  |  | 2013-03-14 12:00 | 2013-03-14 16:00 | 0.25d | -12.12d | 0d |  | Líder de proyecto |  |  | 20 |
| 69 | 1.2.1.13 | Entregable 19: Matriz de Pruebas Integrales (Casos Ejecutados) | milestone | 0d | 2013-07-12 10:00 | 2013-07-12 10:00 | 68 |  |  | 2013-03-14 16:00 | 2013-03-14 16:00 | 0d | -12.12d | 0d |  | Calidad |  |  |  |
| 70 | 1.2.1.14 | Entregable 20: Reporte de Incidencias | milestone | 0d | 2013-07-12 10:00 | 2013-07-12 10:00 | 69 |  |  | 2013-03-14 16:00 | 2013-03-14 16:00 | 0d | -12.12d | 0d |  | Calidad |  |  |  |
| 71 | 2 | **Fase 2 - Rediseño 3.0** |  | 44.46d? | 2013-06-25 09:00 A | 2013-08-28 12:40 | 1 |  | 44.46d? | 2013-01-07 11:00 | 2013-04-15 19:00 | 66.75d? | 0d |  |  |  | 312.33h | 2,069.67 | 10,128 |
| 72 | 2.1 | **Concepción** |  | 0d | 2013-06-25 09:00 A | 2013-06-25 09:00 |  |  | 0d | 2013-01-07 11:00 | 2013-01-10 10:00 | 2.88d | 44.46d |  |  |  |  |  | 230 |
| 73 | 2.1.1 | Entregable 1: Documento de Especificación de Requerimientos del Software | milestone | 0h | 2013-06-25 09:00 A | 2013-06-25 09:00 |  | 99% | 0h | 2013-01-09 17:00 | 2013-01-10 10:00 | 3h | 44.46d | 0d |  | Líder de proyecto |  |  | 30 |
| 74 | 2.1.2 | Entregable 2: Documento de Acuerdo con el Cliente | milestone | 0h | 2013-06-25 09:00 A | 2013-06-25 09:00 | 73 | 99% | 0h | 2013-01-10 10:00 | 2013-01-10 10:00 | 0h | 44.46d |  |  | Líder de proyecto |  |  |  |
| 75 | 2.2 | **Diseño** |  | 12.31d? | 2013-08-12 10:10 | 2013-08-28 12:40 |  |  |  | 2013-01-07 11:00 | 2013-02-08 19:00 | 24.75d? | 0d |  |  |  | 112.33h | 810.67 | 2,504 |
| 76 | 2.2.1 | Entregable 3: Documento de Especificación Funcional | milestone | 0d | 2013-08-12 10:10 | 2013-08-12 10:10 |  |  |  | 2013-01-17 10:00 | 2013-01-17 10:00 | 0d | 12.31d | 0d |  | Líder de proyecto |  |  |  |
| 77 | 2.2.2 | Entregable 6: Matriz de Pruebas Integrales | milestone | 0d | 2013-08-12 10:10 | 2013-08-12 10:10 |  |  |  | 2013-01-07 11:00 | 2013-01-07 11:00 | 0d | 12.31d |  |  | Calidad |  |  |  |
| 78 | 2.2.3 | Entregable 7: Manual de Usuario (Borrador) | milestone | 0d | 2013-08-12 10:10 | 2013-08-12 10:10 | 76 |  |  | 2013-01-17 10:00 | 2013-01-17 10:00 | 0d | 12.31d |  |  | Líder de proyecto |  |  |  |
| 79 | 2.2.4 | Sesión: Certificación de Diseños por Banesco | milestone | 0d? | 2013-08-12 10:10 | 2013-08-12 10:10 |  |  |  | 2013-02-01 09:00 | 2013-02-01 11:00 | 0.25d? | 12.31d |  |  | Líder de proyecto; Banesco |  |  |  |
| 80 | 2.2.5 | **Diseño Llave Virtual** |  | 10.04d | 2013-08-12 10:10 | 2013-08-26 10:30 |  |  |  | 2013-01-31 11:00 | 2013-02-08 17:00 | 6.5d | 0d |  |  |  | 80.33h | 650.67 | 384 |
| 81 | 2.2.5.1 | Diseño gráfico y flujos |  | 9.54d | 2013-08-12 10:10 | 2013-08-23 16:30 |  |  |  | 2013-01-31 11:00 | 2013-02-08 11:00 | 6d | 0d |  | finish no earlier than 2013-07-06 14:40 | Diseño | 76.33h | 610.67 | 384 |
| 82 | 2.2.5.2 | Diseño del manual de usuario |  | 0.5d | 2013-08-23 16:30 | 2013-08-26 10:30 | 81 |  |  | 2013-02-08 11:00 | 2013-02-08 17:00 | 0.5d | 0d |  |  | Líder de proyecto | 4h | 40 |  |
| 83 | 2.2.6 | Entregable 8: Manual de Usuario (Borrador) | milestone | 0d | 2013-08-26 10:30 | 2013-08-26 10:30 | 82 |  |  | 2013-02-08 17:00 | 2013-02-08 17:00 | 0d | 0d |  |  | Líder de proyecto |  |  |  |
| 84 | 2.2.7 | Consultoría en Fase de Diseño |  | 2.27d? | 2013-08-26 10:30 | 2013-08-28 12:40 | 83 |  |  | 2013-02-08 17:00 | 2013-02-08 19:00 | 0.25d? | 0d |  |  | Líder de proyecto; Banesco | 32h | 160 |  |

| ID | WBS | Task | Type | Duration | Start | Finish | Predecessors | Baseline start | Baseline finish | Baseline duration | Total slack | Free slack | Resources | Work | Cost | Baseline cost |
| --- | --- | --- | --- | --- | --- | --- | --- | --- | --- | --- | --- | --- | --- | --- | --- | --- |
| 85 | 2.3 | **Construcción** |  | 9.31d | 2013-08-13 10:10 | 2013-08-26 12:40 |  | 2013-01-07 13:00 | 2013-04-11 19:00 | 64.5d? | 2d |  |  | 118h | 620 | 5,580 |
| 86 | 2.3.1 | **Aplicaciones** |  | 8.38d | 2013-08-13 10:10 | 2013-08-23 15:10 |  | 2013-01-07 13:00 | 2013-04-11 19:00 | 64.5d? | 2d | 0d |  | 112h | 560 | 5,280 |
| 87 | 2.3.1.1 | **Llave Virtual** |  | 8.38d | 2013-08-13 10:10 | 2013-08-23 15:10 |  | 2013-03-05 11:00 | 2013-04-11 19:00 | 25.75d? | 2d |  |  | 112h | 560 | 600 |
| 88 | 2.3.1.1.1 | **Blackberry** |  | 2d | 2013-08-13 10:10 | 2013-08-15 10:10 |  | 2013-03-05 11:00 | 2013-03-08 17:00 | 3.5d? | 8.38d |  |  | 16h | 80 | 120 |
| 89 | 2.3.1.1.1.1 | Implantacion de nuevo diseño |  | 2d? | 2013-08-13 10:10 | 2013-08-15 10:10 | 110 | 2013-03-05 11:00 | 2013-03-08 17:00 | 3d? | 8.38d | 0d | Recurso BBOS | 16h | 80 | 120 |
| 90 | 2.3.1.1.1.2 | Entregable 13: Solución (Pre - Release) | milestone | 0d? | 2013-08-15 10:10 | 2013-08-15 10:10 | 89 | 2013-03-08 17:00 | 2013-03-08 17:00 | 0d? | 8.38d |  |  |  |  |  |
| 91 | 2.3.1.1.2 | **Android** |  | 6.12d | 2013-08-15 12:10 | 2013-08-23 15:10 |  | 2013-03-20 15:00 | 2013-03-26 13:00 | 4d? | 2d |  |  | 48h | 240 | 120 |
| 92 | 2.3.1.1.2.1 | **SmartPhone** |  | 3d | 2013-08-15 12:10 | 2013-08-20 12:10 |  |  |  |  | 2d | 0d |  | 24h | 120 |  |
| 93 | 2.3.1.1.2.1.1 | Implantacion de nuevo diseño |  | 3d? | 2013-08-15 12:10 | 2013-08-20 12:10 | 131 | 2013-03-20 15:00 | 2013-03-26 13:00 | 3d? | 2d | 0d | Recurso Android | 24h | 120 | 120 |
| 94 | 2.3.1.1.2.1.2 | Entregable 14: Solución (Pre - Release) | milestone | 0d? | 2013-08-20 12:10 | 2013-08-20 12:10 | 93 | 2013-03-26 13:00 | 2013-03-26 13:00 | 0d? | 2d | 0d |  |  |  |  |
| 95 | 2.3.1.1.2.2 | **Tablet** |  | 3d | 2013-08-20 15:10 | 2013-08-23 15:10 |  |  |  |  | 2d |  |  | 24h | 120 |  |
| 96 | 2.3.1.1.2.2.1 | Implantacion de nuevo diseño |  | 3d? | 2013-08-20 15:10 | 2013-08-23 15:10 | 92 | 2013-03-20 15:00 | 2013-03-26 13:00 | 3d? | 2d | 0d | Recurso Android | 24h | 120 | 120 |
| 97 | 2.3.1.1.2.2.2 | Entregable 14: Solución (Pre - Release) | milestone | 0d? | 2013-08-23 15:10 | 2013-08-23 15:10 | 96 | 2013-03-26 13:00 | 2013-03-26 13:00 | 0d? | 2d |  |  |  |  |  |
| 98 | 2.3.1.1.3 | **IOS** |  | 7.12d | 2013-08-14 11:10 | 2013-08-23 12:10 |  | 2013-03-20 15:00 | 2013-03-26 13:00 | 4d? | 2.12d |  |  | 48h | 240 | 120 |
| 99 | 2.3.1.1.3.1 | **Iphone** |  | 4.12d | 2013-08-14 11:10 | 2013-08-20 12:10 |  |  |  |  | 2.12d | 0d |  | 24h | 120 |  |
| 100 | 2.3.1.1.3.1.1 | Implantacion de nuevo diseño |  | 3d? | 2013-08-14 11:10 | 2013-08-19 11:10 | 117 | 2013-03-20 15:00 | 2013-03-25 13:00 | 3d? | 3.25d | 1.12d | Recurso iOS | 24h | 120 | 120 |
| 101 | 2.3.1.1.3.1.2 | Entregable 15: Solución (Pre - Release) | milestone | 0d? | 2013-08-20 12:10 | 2013-08-20 12:10 | 94, 100 | 2013-03-26 13:00 | 2013-03-26 13:00 | 0d? | 2.12d |  |  |  |  |  |
| 102 | 2.3.1.1.3.2 | **Ipad** |  | 3d | 2013-08-20 12:10 | 2013-08-23 12:10 |  |  |  |  | 2.12d |  |  | 24h | 120 |  |
| 103 | 2.3.1.1.3.2.1 | Implantacion de nuevo diseño |  | 3d? | 2013-08-20 12:10 | 2013-08-23 12:10 | 99 | 2013-03-20 15:00 | 2013-03-25 13:00 | 3d? | 2.12d | 0d | Recurso iOS | 24h | 120 | 120 |
| 104 | 2.3.1.1.3.2.2 | Entregable 15: Solución (Pre - Release) | milestone | 0d? | 2013-08-23 12:10 | 2013-08-23 12:10 | 103 | 2013-03-26 13:00 | 2013-03-26 13:00 | 0d? | 2.12d |  |  |  |  |  |
| 105 | 2.3.2 | Actualización del manual de usuario |  | 0.75d | 2013-08-23 15:10 | 2013-08-26 12:40 | 86 | 2013-04-12 09:00 | 2013-04-15 19:00 | 2d | 2d | 0d | Líder de proyecto | 6h | 60 | 160 |
| 106 | 2.4 | Entregable 16: Manual de Usuario | milestone | 0d | 2013-08-26 12:40 | 2013-08-26 12:40 | 105 | 2013-04-15 19:00 | 2013-04-15 19:00 | 0d | 2d | 0d | Líder de proyecto |  |  |  |
| 107 | 2.5 | Entregable 17: Solución (Pre-release) | milestone | 0d | 2013-08-26 12:40 | 2013-08-26 12:40 | 106 | 2013-04-15 19:00 | 2013-04-15 19:00 | 0d | 2d |  | Líder de proyecto |  |  |  |
| 108 | 2.6 | **Transición** |  | 9.83d? | 2013-08-12 10:10 | 2013-08-23 18:50 |  | 2013-02-14 15:00 | 2013-04-05 12:40 | 33.96d? | 2d |  |  | 82h | 639 | 1,884 |
| 109 | 2.6.1 | **Pruebas Integrales** |  | 9.83d | 2013-08-12 10:10 | 2013-08-23 18:50 |  | 2013-03-05 11:00 | 2013-04-05 12:40 | 21.21d? | 2d |  |  | 66h | 519 | 1,572 |
| 110 | 2.6.1.1 | **Blackberry** |  | 1d | 2013-08-12 10:10 | 2013-08-13 10:10 |  | 2013-03-05 11:00 | 2013-03-13 13:00 | 6.25d? | 2d | 0d |  | 10h | 74 | 440 |
| 111 | 2.6.1.1.1 | Ejecución de Pruebas Funcionales (Primer Ciclo) |  | 0.25d? | 2013-08-12 10:10 | 2013-08-12 12:10 |  | 2013-03-05 11:00 | 2013-03-07 17:00 | 2.5d? | 2d | 0d | Calidad | 2h | 16 | 160 |
| 112 | 2.6.1.1.2 | Reporte y corrección de incidencias (Primer Ciclo) |  | 0.12d? | 2013-08-12 12:10 | 2013-08-12 15:10 | 111 | 2013-03-07 17:00 | 2013-03-08 11:00 | 0.5d? | 2d | 0d | Calidad; Recurso BBOS | 2h | 13 | 52 |
| 113 | 2.6.1.1.3 | Ejecución de Pruebas Funcionales (Segundo Ciclo) |  | 0.25d? | 2013-08-12 15:10 | 2013-08-12 17:10 | 112 | 2013-03-08 11:00 | 2013-03-12 11:00 | 2d? | 2d | 0d | Calidad | 2h | 16 | 128 |
| 114 | 2.6.1.1.4 | Reporte y corrección de incidencias (Segundo Ciclo) |  | 0.12d? | 2013-08-12 17:10 | 2013-08-12 18:10 | 113 | 2013-03-12 11:00 | 2013-03-12 17:00 | 0.5d? | 2d | 0d | Calidad; Recurso BBOS | 2h | 13 | 52 |
| 115 | 2.6.1.1.5 | Revisión final |  | 0.25d? | 2013-08-12 18:10 | 2013-08-13 10:10 | 114 | 2013-03-12 17:00 | 2013-03-13 13:00 | 0.75d? | 2d | 0d | Calidad | 2h | 16 | 48 |
| 116 | 2.6.1.2 | Certificación de la solución |  | 1h | 2013-08-13 10:10 | 2013-08-13 11:10 | 115 | 2013-03-13 15:00 | 2013-03-13 16:00 | 1h | 2d | 0d | Calidad; Líder de proyecto | 2h | 18 | 18 |

| ID | WBS | Task | Type | Duration | Start | Finish | Predecessors | Baseline start | Baseline finish | Baseline duration | Total slack | Free slack | Resources | Work | Cost | Baseline cost |
| --- | --- | --- | --- | --- | --- | --- | --- | --- | --- | --- | --- | --- | --- | --- | --- | --- |
| 117 | 2.6.1.3 | **iPhone** |  | 1d | 2013-08-13 11:10 | 2013-08-14 11:10 |  | 2013-03-13 16:00 | 2013-03-20 10:00 | 4.5d? | 2d | 0d |  | 10h | 74 | 328 |
| 118 | 2.6.1.3.1 | Ejecución de Pruebas Funcionales (Primer Ciclo) |  | 0.25d? | 2013-08-13 11:10 | 2013-08-13 15:10 | 116 | 2013-03-13 16:00 | 2013-03-15 16:00 | 2d? | 2d | 0d | Calidad | 2h | 16 | 128 |
| 119 | 2.6.1.3.2 | Reporte y corrección de incidencias (Primer Ciclo) |  | 0.12d? | 2013-08-13 15:10 | 2013-08-13 16:10 | 118 | 2013-03-15 16:00 | 2013-03-18 10:00 | 0.5d? | 2d | 0d | Calidad; Recurso iOS | 2h | 13 | 52 |
| 120 | 2.6.1.3.3 | Ejecución de Pruebas Funcionales (Segundo Ciclo) |  | 0.25d? | 2013-08-13 16:10 | 2013-08-13 18:10 | 119 | 2013-03-18 10:00 | 2013-03-19 10:00 | 1d? | 2d | 0d | Calidad | 2h | 16 | 64 |
| 121 | 2.6.1.3.4 | Reporte y corrección de incidencias (Segundo Ciclo) |  | 0.12d? | 2013-08-13 18:10 | 2013-08-14 09:10 | 120 | 2013-03-19 10:00 | 2013-03-19 16:00 | 0.5d? | 2d | 0d | Calidad; Recurso iOS | 2h | 13 | 52 |
| 122 | 2.6.1.3.5 | Revisión final |  | 0.25d? | 2013-08-14 09:10 | 2013-08-14 11:10 | 121 | 2013-03-19 16:00 | 2013-03-20 10:00 | 0.5d? | 2d | 0d | Calidad | 2h | 16 | 32 |
| 123 | 2.6.1.4 | Certificación de la solución |  | 1h | 2013-08-14 11:10 | 2013-08-14 12:10 | 122 | 2013-03-20 10:00 | 2013-03-20 11:00 | 1h | 2d | 0d | Calidad; Líder de proyecto | 2h | 18 | 18 |
| 124 | 2.6.1.5 | **iPad** |  | 3d | 2013-08-15 16:10 | 2013-08-20 16:10 |  | 2013-03-13 16:00 | 2013-03-20 10:00 | 4.5d? | 5.1d |  |  | 10h | 74 | 328 |
| 125 | 2.6.1.5.1 | Ejecución de Pruebas Funcionales (Primer Ciclo) |  | 0.25d? | 2013-08-15 16:10 | 2013-08-15 18:10 |  | 2013-03-13 16:00 | 2013-03-15 16:00 | 2d? | 5.1d | 0d | Calidad | 2h | 16 | 128 |
| 126 | 2.6.1.5.2 | Reporte y corrección de incidencias (Primer Ciclo) |  | 0.25d? | 2013-08-16 10:10 | 2013-08-20 09:10 | 125 | 2013-03-15 16:00 | 2013-03-18 10:00 | 0.5d? | 5.81d | 0d | Calidad; Recurso iOS | 2h | 13 | 52 |
| 127 | 2.6.1.5.3 | Ejecución de Pruebas Funcionales (Segundo Ciclo) |  | 0.25d? | 2013-08-20 09:10 | 2013-08-20 11:10 | 126 | 2013-03-18 10:00 | 2013-03-19 10:00 | 1d? | 5.81d | 0d | Calidad | 2h | 16 | 64 |
| 128 | 2.6.1.5.4 | Reporte y corrección de incidencias (Segundo Ciclo) |  | 0.12d? | 2013-08-20 11:10 | 2013-08-20 12:10 | 127 | 2013-03-19 10:00 | 2013-03-19 16:00 | 0.5d? | 5.81d | 0d | Calidad; Recurso iOS | 2h | 13 | 52 |
| 129 | 2.6.1.5.5 | Revisión final |  | 0.25d? | 2013-08-20 12:10 | 2013-08-20 16:10 | 128 | 2013-03-19 16:00 | 2013-03-20 10:00 | 0.5d? | 5.81d |  | Calidad | 2h | 16 | 32 |
| 130 | 2.6.1.6 | Certificación de la solución |  | 2h | 2013-08-12 10:10 | 2013-08-15 15:10 |  | 2013-03-26 17:00 | 2013-03-26 18:00 | 1h | 8.94d |  | Calidad; Líder de proyecto | 2h | 18 | 18 |
| 131 | 2.6.1.7 | **Android** |  | 1d | 2013-08-14 12:10 | 2013-08-15 12:10 |  | 2013-03-20 11:00 | 2013-03-26 17:00 | 4.5d? | 2d | 0d |  | 10h | 74 | 328 |
| 132 | 2.6.1.7.1 | Ejecución de Pruebas Funcionales (Primer Ciclo) |  | 0.25d? | 2013-08-14 12:10 | 2013-08-14 16:10 | 123 | 2013-03-20 11:00 | 2013-03-22 11:00 | 2d? | 2d | 0d | Calidad | 2h | 16 | 128 |
| 133 | 2.6.1.7.2 | Reporte y corrección de incidencias (Primer Ciclo) |  | 0.12d? | 2013-08-14 16:10 | 2013-08-14 17:10 | 132 | 2013-03-22 11:00 | 2013-03-22 17:00 | 0.5d? | 2d | 0d | Calidad; Recurso Android | 2h | 13 | 52 |
| 134 | 2.6.1.7.3 | Ejecución de Pruebas Funcionales (Segundo Ciclo) |  | 0.25d? | 2013-08-14 17:10 | 2013-08-15 09:10 | 133 | 2013-03-22 17:00 | 2013-03-25 17:00 | 1d? | 2d | 0d | Calidad | 2h | 16 | 64 |
| 135 | 2.6.1.7.4 | Reporte y corrección de incidencias (Segundo Ciclo) |  | 0.12d? | 2013-08-15 09:10 | 2013-08-15 10:10 | 134 | 2013-03-25 17:00 | 2013-03-26 11:00 | 0.5d? | 2d | 0d | Calidad; Recurso Android | 2h | 13 | 52 |
| 136 | 2.6.1.7.5 | Revisión final |  | 0.25d? | 2013-08-15 10:10 | 2013-08-15 12:10 | 135 | 2013-03-26 11:00 | 2013-03-26 17:00 | 0.5d? | 2d | 0d | Calidad | 2h | 16 | 32 |
| 137 | 2.6.1.8 | Certificación de la solución |  | 2h | 2013-08-15 12:10 | 2013-08-15 16:10 | 136 | 2013-03-26 17:00 | 2013-03-26 18:00 | 1h | 2.48d | 0d | Calidad; Líder de proyecto | 2h | 18 | 18 |
| 138 | 2.6.1.9 | **Android Tablet** |  | 5.96d | 2013-08-15 18:10 | 2013-08-23 17:50 |  | 2013-03-26 18:00 | 2013-04-05 11:40 | 5.46d? | 2.48d |  |  | 10h | 73 | 324 |
| 139 | 2.6.1.9.1 | Ejecución de Pruebas Funcionales (Primer Ciclo) |  | 0.25d? | 2013-08-15 18:10 | 2013-08-16 10:10 | 137 | 2013-03-26 18:00 | 2013-04-01 18:00 | 2d? | 2.48d | 0d | Calidad | 2h | 16 | 128 |
| 140 | 2.6.1.9.2 | Reporte y corrección de incidencias (Primer Ciclo) |  | 0.38d? | 2013-08-16 10:10 | 2013-08-20 15:10 | 139 | 2013-04-01 18:00 | 2013-04-03 13:00 | 1d? | 2.48d | 0d | Recurso Android [50%]; Recurso iOS [50%]; Calidad | 2h | 13 | 52 |
| 141 | 2.6.1.9.3 | Ejecución de Pruebas Funcionales (Segundo Ciclo) |  | 0.25d? | 2013-08-20 15:10 | 2013-08-20 17:10 | 140 | 2013-04-03 15:00 | 2013-04-04 13:00 | 1d? | 2.48d | 0d | Calidad | 2h | 16 | 64 |
| 142 | 2.6.1.9.4 | Reporte y corrección de incidencias (Segundo Ciclo) |  | 0.17d? | 2013-08-20 17:10 | 2013-08-23 15:50 | 141 | 2013-04-04 15:00 | 2013-04-04 17:40 | 0.33d? | 2.48d | 0d | Recurso Android; Recurso iOS; Calidad | 2h | 12 | 48 |
| 143 | 2.6.1.9.5 | Revisión final |  | 0.25d? | 2013-08-23 15:50 | 2013-08-23 17:50 | 142 | 2013-04-04 17:40 | 2013-04-05 11:40 | 0.5d? | 2.48d | 0d | Calidad | 2h | 16 | 32 |
| 144 | 2.6.1.10 | Certificación de la solución |  | 1h | 2013-08-23 17:50 | 2013-08-23 18:50 | 143 | 2013-04-05 11:40 | 2013-04-05 12:40 | 1h | 2.48d |  | Calidad; Líder de proyecto | 2h | 18 | 18 |
| 145 | 2.6.1.11 | Actualización del manual de usuario |  | 0.75d? | 2013-08-13 11:10 | 2013-08-14 09:10 | 116 | 2013-03-13 16:00 | 2013-03-14 12:00 | 0.75d? | 8.31d | 0d | Líder de proyecto | 6h | 60 | 60 |
| 146 | 2.6.1.12 | Entregable 18: Manual de Usuario Final | milestone | 0d | 2013-08-14 09:10 | 2013-08-14 09:10 | 145 | 2013-03-14 12:00 | 2013-03-14 16:00 | 0.25d | 8.31d | 0d | Líder de proyecto |  |  | 20 |
| 147 | 2.6.1.13 | Entregable 19: Matriz de Pruebas Integrales (Casos Ejecutados) | milestone | 0d | 2013-08-14 09:10 | 2013-08-14 09:10 | 146 | 2013-03-14 16:00 | 2013-03-14 16:00 | 0d | 8.31d | 0d | Calidad |  |  |  |
| 148 | 2.6.1.14 | Entregable 20: Reporte de Incidencias | milestone | 0d | 2013-08-14 09:10 | 2013-08-14 09:10 | 147 | 2013-03-14 16:00 | 2013-03-14 16:00 | 0d | 10.44d | 0d | Calidad |  |  |  |

| ID | WBS | Task | Type | Duration | Start | Finish | Predecessors | Baseline start | Baseline finish | Baseline duration | Total slack | Free slack | Resources | Work | Cost | Baseline cost |
| --- | --- | --- | --- | --- | --- | --- | --- | --- | --- | --- | --- | --- | --- | --- | --- | --- |
| 149 | 2.6.2 | **Entrega** |  | 2.12d | 2013-08-14 09:10 | 2013-08-16 10:10 | 147 | 2013-03-14 16:00 | 2013-03-18 16:00 | 2d | 8.31d |  |  | 16h | 120 | 120 |
| 150 | 2.6.2.1 | Despliegue de la solución / Entrada a producción / Pase a producción |  | 8h | 2013-08-14 09:10 | 2013-08-15 09:10 |  | 2013-03-14 16:00 | 2013-03-15 16:00 | 8h | 8.31d | 0d | Integración | 8h | 40 | 40 |
| 151 | 2.6.2.2 | Pruebas internas | milestone | 0h | 2013-08-15 09:10 | 2013-08-15 09:10 | 150 | 2013-03-15 16:00 | 2013-03-15 16:00 | 0h | 8.31d | 0d | Banesco |  |  |  |
| 152 | 2.6.2.3 | Lanzamiento de aplicaciones |  | 1d | 2013-08-15 09:10 | 2013-08-16 10:10 | 151 | 2013-03-15 16:00 | 2013-03-18 16:00 | 1d | 8.31d |  | Líder de proyecto | 8h | 80 | 80 |
| 153 | 2.6.2.4 | Entregable Final: Solución (Release) | milestone | 0d | 2013-08-14 09:10 | 2013-08-14 09:10 | 148 | 2013-03-14 16:00 | 2013-03-14 16:00 | 0d | 10.44d | 0d | Líder de proyecto |  |  |  |
| 154 | 2.6.2.5 | Carta de aceptación | milestone | 0h | 2013-08-14 09:10 | 2013-08-14 09:10 | 153 | 2013-03-14 16:00 | 2013-03-14 16:00 | 0h | 10.44d |  | Cliente |  |  |  |
